How a schedule from Planner changed from version to version. A marks actual dates.

## Version 1 (saved 2013-11-19)

Note of the change: Layout

| ID | WBS | Task | Duration | Start | Finish | Predecessors | Complete | Constraint |
| --- | --- | --- | --- | --- | --- | --- | --- | --- |
| 1 | 1 | **Criar Aplicação** | 2.12d | 2013-11-19 | 2013-11-22 |  | 100% |  |
| 2 |  | Criar Aplicacao Yii |  | 2013-11-19 | 2013-11-19 |  | 100% |  |
| 3 |  | Criar github | 1d | 2013-11-19 | 2013-11-21 | 2 | 100% |  |
| 4 |  | Configurar urlHelper | 1d | 2013-11-21 | 2013-11-22 | 3 | 100% |  |
| 5 | 1.4 | **Configurar Banco de Dados** | 2d | 2013-11-19 | 2013-11-22 | 2 | 100% |  |
| 6 |  | Criar Banco de dados | 1d | 2013-11-19 | 2013-11-21 |  | 100% |  |
| 7 |  | Resolver problema string vazia x numeros | 1d | 2013-11-21 | 2013-11-22 | 6 | 100% |  |
| 8 | 2 | **Controles Básicos** |  | 2013-11-22 | 2013-11-30 | 1 |  |  |
| 9 |  | Controle Códigos |  | 2013-11-22 | 2013-11-23 |  | 100% |  |
| 10 | 2.2 | **Layout** | 2d | 2013-11-23 | 2013-11-26 | 9 |  |  |
| 11 |  | Inserir logotipos e ícones tela inicial | 1d | 2013-11-23 | 2013-11-25 |  | 100% |  |
| 12 |  | Menu |  | 2013-11-25 | 2013-11-26 | 11 |  |  |
| 13 | 2.3 | **Localização** | 4d | 2013-11-26 | 2013-11-30 | 10 |  |  |
| 14 |  | Fazer exemplo manutenção com números formatados | 1d | 2013-11-26 | 2013-11-27 |  |  | start no earlier than 2013-11-18 |
| 15 |  | Fazer exemplo manutenção com datas formatadas | 1d | 2013-11-27 | 2013-11-28 | 14 |  |  |
| 16 |  | Traduzir mensagens Yii | 1d | 2013-11-28 | 2013-11-29 | 15 |  |  |
| 17 |  | Traduzir templates | 1d | 2013-11-29 | 2013-11-30 | 16 |  |  |
| 18 | 3 | **Segurança** | 4d | 2013-11-30 | 2013-12-05 | 8 | 18% |  |
| 19 |  | Criar Manutenção Usuário | 1d | 2013-11-30 | 2013-12-02 | 9 | 20% |  |
| 20 |  | Adicionar Funcionalidade Login | 1d | 2013-12-02 | 2013-12-03 | 19 |  |  |
| 21 |  | Campos alteracao/criacao | 1d | 2013-12-03 | 2013-12-04 | 20 | 50% |  |
| 22 |  | Instalar módulo SRBAC | 1d | 2013-12-04 | 2013-12-05 | 21 |  |  |
| 23 | 4 | **Financeiro** | 62d | 2013-12-05 | 2014-02-18 | 18 |  |  |
| 24 |  | Manutenção Pessoas | 1d | 2013-12-05 | 2013-12-06 |  |  |  |
| 25 | 4.2 | **Manutenção Títulos** | 2d | 2013-12-06 | 2013-12-09 | 24 |  |  |
| 26 |  | À Receber | 1d | 2013-12-06 | 2013-12-07 |  |  |  |
| 27 |  | À Pagar | 1d | 2013-12-07 | 2013-12-09 | 26 |  |  |
| 28 |  | Liquidação Títulos | 1d | 2013-12-09 | 2013-12-10 | 25 |  |  |
| 29 |  | Emissão Recibos | 1d | 2013-12-10 | 2013-12-11 | 28 |  |  |
| 30 |  | Emissão Boletos | 1d | 2013-12-11 | 2013-12-12 | 29 |  |  |
| 31 |  | Integração Boletos Bradesco | 1d | 2014-01-27 | 2014-01-28 | 40 |  |  |
| 32 |  | Manutenção Cheques |  | 2014-01-28 | 2014-01-30 | 31 |  |  |
| 33 |  | Controle Cobrador Externo |  | 2014-01-30 | 2014-02-04 | 32 |  |  |
| 34 |  | Fechamentos Pendentes |  | 2014-02-04 | 2014-02-07 | 33 |  |  |
| 35 |  | Cadastro de Formas de Pagamento |  | 2014-02-07 | 2014-02-07 | 34 |  |  |
| 36 |  | Ranking Atraso |  | 2014-02-07 | 2014-02-10 | 35 |  |  |
| 37 |  | Controle Limite de Crédito |  | 2014-02-10 | 2014-02-12 | 36 |  |  |
| 38 |  | Portador |  | 2014-02-12 | 2014-02-13 | 37 |  |  |
| 39 |  | Fechamento de Caixas |  | 2014-02-13 | 2014-02-18 | 38 |  |  |
| 40 | 5 | **Caixas** |  | 2013-12-12 | 2014-01-27 | 30 |  |  |
| 41 | 5.1 | **Notas Fiscais** |  | 2013-12-12 | 2014-01-07 |  |  |  |
| 42 |  | Manutenção Notas Fiscais |  | 2013-12-12 | 2013-12-24 |  |  |  |
| 43 |  | NFE |  | 2013-12-24 | 2013-12-31 | 42 |  |  |
| 44 |  | NFCE |  | 2013-12-31 | 2014-01-07 | 43 |  |  |
| 45 | 5.2 | **Negócio** |  | 2014-01-07 | 2014-01-27 | 41 |  |  |
| 46 |  | Manutenção Negócio |  | 2014-01-07 | 2014-01-18 |  |  |  |
| 47 |  | Geração Notinhas |  | 2014-01-18 | 2014-01-21 | 46 |  |  |
| 48 |  | Geração NFCE |  | 2014-01-21 | 2014-01-23 | 47 |  |  |
| 49 |  | Geração NFE |  | 2014-01-23 | 2014-01-25 | 48 |  |  |
| 50 |  | Geração Títulos |  | 2014-01-25 | 2014-01-27 | 49 |  |  |
| 51 | 6 | **Estoque** |  | 2014-02-18 | 2014-03-07 | 23 |  |  |
| 52 |  | Grupo e Subgrupo de Produto |  | 2014-02-18 | 2014-02-19 |  |  |  |
| 53 |  | Cadastro de Produtos |  | 2014-02-19 | 2014-02-21 | 52 |  |  |
| 54 |  | Alterações de Preço |  | 2014-02-21 | 2014-02-22 | 53 |  |  |
| 55 |  | Cadastro de Marcas |  | 2014-02-22 | 2014-02-22 | 54 |  |  |
| 56 | 6.5 | **Entradas de Mercadoria** |  | 2014-02-22 | 2014-03-04 | 55 |  |  |
| 57 |  | Importação XML NFE's |  | 2014-02-22 | 2014-02-28 |  |  |  |
| 58 |  | Cálculo Preços de venda |  | 2014-02-28 | 2014-03-04 | 57 |  |  |
| 59 |  | Unidade de Medida |  | 2014-03-04 | 2014-03-05 | 56 |  |  |
| 60 |  | Etiquetas de Preço |  | 2014-03-05 | 2014-03-07 | 59 |  |  |
| 61 | 7 | **Fiscal** |  | 2014-03-07 | 2014-03-22 | 51 |  |  |
| 62 |  | Integração Contabilidade |  | 2014-03-07 | 2014-03-19 |  |  |  |
| 63 |  | Cadastro ECF |  | 2014-03-19 | 2014-03-19 | 62 |  |  |
| 64 |  | Cadastro Empresa/Filial |  | 2014-03-19 | 2014-03-20 | 63 |  |  |
| 65 |  | Cadastro Pais/Estado/Cidade |  | 2014-03-20 | 2014-03-20 | 64 |  |  |
| 66 |  | Cadastro Natureza de Operacao |  | 2014-03-20 | 2014-03-21 | 65 |  |  |
| 67 |  | Cadastro Tributacao |  | 2014-03-21 | 2014-03-21 | 66 |  |  |
| 68 |  | Cadastro Tributacao x Natureza de Operacao |  | 2014-03-21 | 2014-03-22 | 67 |  |  |

## Version 2 (saved 2013-11-22)

Note of the change: Correcao Layout, Formato de datas

Last finish 2014-03-22 → 2014-04-05 (+14d). Complete tasks 7 → 10.

Added:

| ID | Task | Start | Finish | Predecessors |
| --- | --- | --- | --- | --- |
| 69 | **Dashboard** | 2014-03-22 | 2014-04-05 | 61 |
| 70 | Vendas em aberto | 2014-03-22 | 2014-03-25 |  |
| 71 | Notas por emitir | 2014-03-25 | 2014-03-27 | 70 |
| 72 | Compras por lançar | 2014-03-27 | 2014-03-29 | 71 |
| 73 | Mensagens administrativas | 2014-03-29 | 2014-04-01 | 72 |
| 74 | Resumo Contas à Receber | 2014-04-01 | 2014-04-03 | 73 |
| 75 | Resumo Contas à Pagar | 2014-04-03 | 2014-04-05 | 74 |

Changed:

| ID | Task | Complete |
| --- | --- | --- |
| 10 | **Layout** | 0% → 100% |
| 12 | Menu | 0% → 100% |
| 16 | Traduzir mensagens Yii | 0% → 100% |
| 17 | Traduzir templates | 0% → 100% |

## Version 3 (saved 2013-11-24)

Note of the change: bootstrap

Last finish stays 2014-04-05. Complete tasks 10 → 12.

Changed:

| ID | Task | Complete |
| --- | --- | --- |
| 13 | **Localização** | 0% → 100% |
| 14 | Fazer exemplo manutenção com números formatados | 0% → 100% |
| 15 | Fazer exemplo manutenção com datas formatadas | 0% → 100% |

## Version 4 (saved 2013-12-09)

Note of the change: Manutencao Pessoa

Last finish stays 2014-04-05. Complete tasks 12 → 16.

Changed:

| ID | Task | Complete |
| --- | --- | --- |
| 8 | **Controles Básicos** | 0% → 100% |
| 18 | **Segurança** | 18% → 100% |
| 19 | Criar Manutenção Usuário | 20% → 100% |
| 20 | Adicionar Funcionalidade Login | 0% → 100% |
| 21 | Campos alteracao/criacao | 50% → 100% |
| 22 | Instalar módulo SRBAC | 0% → 100% |
